# PPV軟體專案人力規劃與工作分派

Schedule from MS Project, 2005-02-14 to 2006-04-14, status date 2006-01-04, A marks actual dates.
PPV軟體專案人力規劃與工作分派
Cablesoft Tech Inc

## Calendars

- 標準: Mon-Fri 09:00-12:00, 13:00-18:00; Sat-Sun off. Exceptions (off unless hours are given): 2005-02-19 08:00-12:00, 13:00-17:00, 2005-02-26 08:00-12:00, 13:00-17:00, 2005-02-28, 2005-03-05 08:00-12:00, 13:00-17:00, 2005-03-12 08:00-12:00, 13:00-17:00, 2005-03-19 08:00-12:00, 13:00-17:00, 2005-03-26 08:00-12:00, 13:00-17:00, 2005-04-02 08:00-12:00, 13:00-17:00, 2005-04-05, 2005-04-09 08:00-12:00, 13:00-17:00, 2005-04-16 08:00-12:00, 13:00-17:00, 2005-04-23 08:00-12:00, 13:00-17:00, 2005-04-30 08:00-12:00, 13:00-17:00, 2005-05-07 08:00-12:00, 13:00-17:00, 2005-05-14 08:00-12:00, 13:00-17:00, 2005-05-21 08:00-12:00, 13:00-17:00, 2005-05-28 08:00-12:00, 13:00-17:00, 2005-06-04 08:00-12:00, 13:00-17:00, 2005-06-11 08:00-12:00, 13:00-17:00, 2005-06-18 08:00-12:00, 13:00-17:00, 2005-06-25 08:00-12:00, 13:00-17:00, 2005-07-31 08:00-12:00, 13:00-17:00, 2005-10-01 08:00-12:00, 13:00-17:00, 2005-10-10, 2005-12-31 08:00-12:00, 13:00-17:00, 2006-01-30 to 2006-02-02, 2006-02-03 08:00-12:00, 13:00-17:00.

## Resources

| Resource |
| --- |
| Jacky |
| Hammer |
| Crystal |
| Sean |
| Nick |
| RDK |
| Lawrence |
| RDP ? |
| Pierre |
| Jacy |
| Liga |
| Williams |
| Jim |
| Janice |
| KC |
| Willams |
| Debby |
| Hammer/Sean |
| RD/PM |
| Sean/Hammer |
| Crystal/Hammer |
| Nagra |
| Karen |
| Penny |
| CableSoft |

## Schedule

| ID | WBS | Task | Duration | Start | Finish | Predecessors | Complete | Remaining | Baseline start | Baseline finish | Baseline duration | Total slack | Free slack | Constraint | Resources | Work | Actual work |
| --- | --- | --- | --- | --- | --- | --- | --- | --- | --- | --- | --- | --- | --- | --- | --- | --- | --- |
| 1 | 1 | **PPV專案** | 320d? | 2005-02-14 A | 2006-04-14 |  | 79% | 68.24d? | 2005-02-14 | 2006-03-31 | 309d? | 0d |  |  | KC; Lawrence; Penny | 11752h | 2827.16h |
| 2 | 1.1 | **SMS Phase 1 & 2(IPPV無回傳與PPV預付/後付制)** | 114d? | 2005-10-05 A | 2006-03-17 |  | 79% | 23.55d? | 2005-10-20 | 2006-03-15 | 102d? | 20d |  |  | Lawrence | 832h | 660.14h |
| 3 | 1.1.1 | **需求分析** | 93d | 2005-10-05 A | 2006-02-16 |  | 92% | 7.16d | 2005-10-20 | 2006-03-01 | 92d | 39.75d |  |  |  |  |  |
| 4 | 1.1.1.1 | PPV 節目表(新增與異動XML電子檔) | 15d | 2005-10-05 A | 2005-10-26 A |  | 100% |  | 2005-11-30 | 2006-01-09 | 30d |  |  |  |  |  |  |
| 5 | 1.1.1.2 | PPV STB 管理 | 13.88d | 2005-10-25 A | 2005-11-11 A |  | 100% |  | 2005-10-25 | 2005-11-11 | 13.88d |  |  | start no earlier than 2005-02-25 |  |  |  |
| 6 | 1.1.1.3 | PPV結算 | 22d | 2005-12-30 A | 2006-01-27 A |  | 100% |  | 2005-12-19 | 2006-01-12 | 20d |  |  | finish no earlier than 2006-01-27 |  |  |  |
| 7 | 1.1.1.4 | PPV 來電管理 | 30d | 2005-11-01 A | 2005-12-12 A |  | 100% |  | 2005-11-01 | 2005-12-12 | 30d |  |  | start no earlier than 2005-03-05 |  |  |  |
| 8 | 1.1.1.5 | PPV 工務管理 | 10d | 2006-01-03 A | 2006-01-16 A |  | 100% |  | 2005-11-01 | 2005-11-28 | 20d |  |  | start no earlier than 2005-11-01 |  |  |  |
| 9 | 1.1.1.6 | IPPV/PPV獎佣金管理(未定) | 1d | 2005-12-14 A | 2005-12-14 A |  | 100% |  | 2005-12-14 | 2005-12-14 | 1d |  |  | start no earlier than 2005-12-14 |  |  |  |
| 10 | 1.1.1.7 | PPV 帳務 | 20d | 2005-12-29 A | 2006-01-24 A | 18 | 100% |  | 2006-01-13 | 2006-02-15 | 20d |  |  | start no earlier than 2005-03-15 |  |  |  |
| 11 | 1.1.1.8 | PPV 批次 | 10d | 2006-01-02 A | 2006-01-13 A |  | 100% |  | 2006-01-13 | 2006-01-26 | 10d |  |  | start no earlier than 2006-01-02 |  |  |  |
| 12 | 1.1.1.9 | PPV節目與互動服務拆帳管理(未定) | 1d | 2005-12-14 A | 2005-12-14 A |  | 100% |  | 2005-12-14 | 2005-12-14 | 1d |  |  | start no earlier than 2005-12-14 |  |  |  |
| 13 | 1.1.1.10 | PPV 服務/顯示 | 12d | 2005-10-20 A | 2005-11-04 A |  | 100% |  | 2005-10-20 | 2005-11-04 | 12d |  |  | start no earlier than 2005-03-23 |  |  |  |
| 14 | 1.1.1.11 | PPV 轉移 | 10d | 2006-02-03 | 2006-02-16 | 6 |  |  | 2006-02-16 | 2006-03-01 | 10d | 31d | 0d | start no earlier than 2005-03-24 |  |  |  |
| 15 | 1.1.1.12 | PPV 報表 | 20d | 2005-12-21 A | 2006-01-16 |  | 50% | 10d | 2005-12-08 | 2006-01-03 | 20d | 58.75d | 0d | start no earlier than 2005-12-21 |  |  |  |
| 16 | 1.1.1.13 | PPV訂單管理Phase 1, Phase 2 | 45d | 2005-10-06 A | 2005-12-08 A |  | 100% |  | 2005-12-14 | 2006-01-23 | 30d |  |  | start no earlier than 2005-12-14 |  |  |  |
| 17 | 1.1.1.14 | PPV 結算報表 | 20d | 2006-01-16 A | 2006-02-16 A |  | 100% |  | 2005-12-16 | 2006-01-11 | 20d |  |  |  |  |  |  |
| 18 | 1.1.1.15 | PPV訂購明細瀏覽與單筆結算 | 10d | 2005-12-15 A | 2005-12-28 A |  | 100% |  | 2005-12-15 | 2005-12-28 | 10d |  |  | finish no earlier than 2005-04-09 |  |  |  |
| 19 | 1.1.1.16 | PPV 帳務管理結算前端 | 20d | 2005-12-30 A | 2006-01-25 A |  | 100% |  | 2005-12-19 | 2006-01-19 | 25d |  |  | start no earlier than 2005-12-30 |  |  |  |
| 20 | 1.1.2 | **程式撰寫及測試** | 68d? | 2005-12-09 A | 2006-03-17 |  | 60% | 27.44d? | 2005-11-29 | 2006-03-15 | 74d? | 20d |  |  |  |  |  |
| 21 | 1.1.2.1 | PPV 節目表(新增與異動XML電子檔) | 15d | 2005-12-21 A | 2006-01-09 A | 4FS+40d | 100% |  | 2006-01-10 | 2006-01-12 | 3d |  |  |  |  |  |  |
| 22 | 1.1.2.2 | PPV STB 管理 | 5d | 2005-12-16 A | 2005-12-23 A | 5FS+25d | 100% |  | 2005-12-16 | 2005-12-23 | 5d |  |  |  |  |  |  |
| 23 | 1.1.2.3 | PPV結算 | 14d | 2006-02-28 A | 2006-03-17 | 6 | 50% | 7d | 2006-01-13 | 2006-01-26 | 10d | 20d |  | finish no earlier than 2006-03-17 |  |  |  |
| 24 | 1.1.2.4 | PPV 來電管理 | 10d | 2005-12-13 A | 2005-12-26 A | 7 | 100% |  | 2005-12-13 | 2005-12-26 | 10d |  |  |  |  |  |  |
| 25 | 1.1.2.5 | PPV 工務管理 | 40d | 2006-01-17 A | 2006-03-17 | 8 | 13% | 35d | 2005-11-29 | 2005-12-12 | 10d | 7d | 0d | finish no earlier than 2006-03-17 |  |  |  |
| 26 | 1.1.2.6 | IPPV/PPV獎佣金管理(未定) | 1d? | 2005-12-15 A | 2005-12-15 A | 9 | 100% |  | 2005-12-15 | 2005-12-15 | 1d? |  |  |  |  |  |  |
| 27 | 1.1.2.7 | PPV 帳務 | 20d | 2006-01-25 A | 2006-02-27 A | 10 | 100% |  | 2006-02-16 | 2006-03-15 | 20d |  |  |  |  |  |  |
| 28 | 1.1.2.8 | PPV 批次 | 10d | 2006-01-16 A | 2006-01-27 | 11 | 50% | 5d | 2006-01-27 | 2006-02-15 | 10d | 51d |  |  |  |  |  |
| 29 | 1.1.2.9 | PPV節目與互動服務拆帳管理(未定) | 1d? | 2005-12-15 A | 2005-12-15 A | 12 | 100% |  | 2005-12-15 | 2005-12-15 | 1d? |  |  |  |  |  |  |
| 30 | 1.1.2.10 | PPV 服務/顯示 | 4d | 2005-12-15 A | 2005-12-20 A | 13FS+28d | 100% |  | 2005-12-15 | 2005-12-20 | 4d |  |  |  |  |  |  |
| 31 | 1.1.2.11 | PPV 轉移 | 10d | 2006-02-17 | 2006-03-02 | 14 |  |  | 2006-03-02 | 2006-03-15 | 10d | 31d |  |  |  |  |  |
| 32 | 1.1.2.12 | PPV 報表 | 5d | 2006-01-04 A | 2006-01-20 | 15 | 75% | 1.25d | 2006-01-04 | 2006-01-10 | 5d | 56d |  |  |  |  |  |
| 33 | 1.1.2.13 | PPV訂單管理Phase 1, Phase 2 | 10d | 2005-12-09 A | 2005-12-22 A | 16 | 100% |  | 2006-01-24 | 2006-02-10 | 10d |  |  |  |  |  |  |
| 34 | 1.1.2.14 | PPV 結算報表 | 5d | 2006-02-17 A | 2006-02-23 | 17 | 25% | 3.75d | 2006-01-12 | 2006-01-18 | 5d | 36d |  | finish no earlier than 2006-01-20 |  |  |  |
| 35 | 1.1.2.15 | PPV訂購明細瀏覽與單筆結算 | 7d | 2005-12-13 A | 2005-12-21 A | 18 | 100% |  | 2005-12-29 | 2006-01-05 | 7d |  |  |  |  |  |  |
| 36 | 1.1.2.16 | PPV 帳務管理結算前端 | 14d | 2006-01-26 A | 2006-02-20 | 19 | 50% | 7d | 2006-01-20 | 2006-01-20 | 1d? | 39d |  |  |  |  |  |

Notes:
- 4: 1.NICK跟HAMMER...製作中
- 5: Phrase 1 / 母子機控管(針對特定盒子) / 母子機批次作業 / 母子機屬性查詢 / 母子機定期驗證屬性代碼檔維護 / 設備型號代碼：增加各種功能對應的屬性，以便控管(開機/回單/訂購服務/下CA指令) / STB批次作業 (IPPV/PPV相關之批次作業列於之前對應模組中)/ Phrase 2 / 5.5 STB升降級處理
- 6: 7.4 PPV費用結算作業(後付制) / 7.5 PPV費用結算作業(預付制) / 7.6 出帳前異常帳務資料處理
- 7: 增加處理可受理: / Phrase 1/ IPPV點數訂購、IPPV點數取消訂購、IPPV相關消費查詢、母子機驗證程序說明 / Phrase 2/ PPV預付點數訂購、PPV預付點數取消訂購、PPV節目訂購、PPV節目取消訂購、預付制PPV點數餘額查詢、PPV訂購資料查詢、索取PPV節目收視對帳單/帳單、PPV預付點數結清、PPV預付點數移轉、STB升降級
- 8: Phrase 1 / 派工單加印客戶狀態與設備資料 / STB結清：優惠方案的STB退拆/ Phrase 2 / 6.3 STB退拆: 來電�派工�回報�處理(立刻回傳、關頻道、點數移轉、退費、關閉PPV/IPPV訂購權、處理母子機關聯、關機)�結清出帳�施工�結案 / 未做
- 9: 13.1 IPPV/PPV點數獎佣金公式設定 / 13.2 IPPV/PPV點數獎佣金結算 / 13.3 IPPV/PPV點數獎佣金報表
- 10: Phrase 1 / 收費項新增以下項目與內控: / IPPV點數費 / IPPV點數退費 / PPV預付點數費 / PPV預付點數退費 / PPV節目收視費 / PPV節目退費 / PPV對帳單處理費 / 不同收費方式的客戶預收款處理(單筆/整批) / 線上請款機制/ Phrase 2
- 11: 4.3 PPV批次作業 / 整批取消 PPV訂購權 / 整批恢復 PPV訂購權/ 4.4 PPV結算優惠原則設定
- 12: 14.1 拆帳公式設定 / 14.2 拆帳結算 / 14.3 拆帳報表
- 13: 4.1 PPV服務設定 (CSR功能，針對特定客戶或盒子) / 啟動PPV訂購權 / 取消PPV訂購權 / 設定PPV節目訂購與購買PPV預付點數時的客戶認證方式 / 於客戶訂購機制增加重覆授權節目與取消授權節目.但需檢核未看的有效節目部分 / 4.2 PPV屬性顯示 / 顯示PPV訂購權(含限制級節目是否可訂購) / 顯示PPV節目訂購與購買PPV預付點數時的客戶認證方式 / PPV節目表查詢 / PPV訂購資料查詢(已訂購、已/未收視、已/未結帳)訂購節目明細資料 / PPV收費資料查詢(預付只有點數費, 後付制為節目費用並需可立即查到該筆金額所定的節目明細) / 預付制PPV點數餘額查詢
- 14: 7.11 PPV預付點數移轉作業
- 15: IPPV點數訂購收費一覽表 / 超過二台(含) STB客戶報表 / 超過二台(含) STB的母子機控制方式及沒有做控制的STB報表 / 16.2 斷訊管理 / 報表管理某一支報表程式
- 16: 增加: / IPPV點數訂購 / 2.2 PPV預付點數訂購(因目前採用後付制)/ 2.3 PPV節目訂購 / 2.4 PPV節目取消訂購
- 17: 7.4 PPV費用結算作業(後付制) / 7.5 PPV費用結算作業(預付制) / 7.6 出帳前異常帳務資料處理

| ID | WBS | Task | Duration | Start | Finish | Predecessors | Complete | Remaining | Baseline start | Baseline finish | Baseline duration | Total slack | Free slack | Constraint | Resources | Work | Actual work |
| --- | --- | --- | --- | --- | --- | --- | --- | --- | --- | --- | --- | --- | --- | --- | --- | --- | --- |
| 37 | 1.2 | **排片系統** | 59d | 2005-12-01 A | 2006-02-24 A |  | 100% |  | 2005-03-01 | 2005-03-31 | 27d |  |  |  |  | 160h | 160h |
| 38 | 1.2.1 | 編輯節目表 | 38d | 2005-12-01 A | 2006-01-20 A |  | 100% |  | 2005-03-01 | 2005-03-31 | 27d |  |  | finish no earlier than 2006-01-20 |  |  |  |
| 39 | 1.2.2 | 自CAS的Program builder匯出新增XML電子檔 | 20d | 2005-12-01 A | 2005-12-28 A |  | 100% |  | 2005-03-01 | 2005-03-02 | 2d |  |  | finish no earlier than 2005-12-28 | Nick | 160h | 160h |
| 40 | 1.2.3 | 自排片系統中異動節目表 | 20d | 2005-12-01 A | 2005-12-28 A |  | 100% |  | 2005-03-03 | 2005-03-04 | 2d |  |  | start no earlier than 2005-12-01 |  |  |  |
| 41 | 1.2.4 | 自CAS的Program builder匯出異動節目XML電子檔 | 20d | 2005-12-01 A | 2005-12-28 A |  | 100% |  | 2005-03-04 | 2005-03-04 | 1d |  |  | start no earlier than 2005-12-01 |  |  |  |
| 42 | 1.2.5 | 程式測試 | 39d | 2005-12-29 A | 2006-02-24 A | 41 | 100% |  |  |  |  |  |  | finish no earlier than 2006-02-10 |  |  |  |
| 43 | 1.3 | **CA Command gateway** | 141d | 2005-09-08 A | 2006-03-28 |  | 85% | 20.56d | 2005-02-14 | 2005-04-27 | 61d | 13d |  |  |  | 40.02h | 40.02h |
| 44 | 1.3.1 | 開博對Nagra提出IPPV/PPV command matrix文件 | 10d | 2005-09-08 A | 2005-09-21 A |  | 100% |  | 2005-02-14 | 2005-02-18 | 4d |  |  | start no earlier than 2005-09-08 |  |  |  |
| 45 | 1.3.2 | Nagra對開博提出修正版Command matrix文件 | 5d | 2005-09-22 A | 2005-09-28 A | 44 | 100% |  | 2005-02-21 | 2005-02-25 | 4.88d |  |  | finish no earlier than 2005-02-25 | Nagra | 40.02h | 40.02h |
| 46 | 1.3.3 | 所有IPPV與PPV高階轉低階指令程式增修 | 5d | 2005-09-29 A | 2005-10-04 A | 45 | 100% |  | 2005-03-01 | 2005-03-31 | 26.88d |  |  | finish no earlier than 2005-03-31 |  |  |  |
| 47 | 1.3.4 | 開博撥接至Nagra瑞士實驗室驗證資料格式與CAS反應 | 5d | 2005-10-05 A | 2005-10-12 A | 46 | 100% |  | 2005-03-07 | 2005-03-11 | 4.88d |  |  |  |  |  |  |
| 48 | 1.3.5 | Nagra來EMC實驗室協助指導與測試 | 6d | 2005-10-13 A | 2005-10-20 A | 47 | 100% |  | 2005-03-14 | 2005-03-25 | 10d |  |  |  |  |  |  |
| 49 | 1.3.6 | 至Lab測試高轉低階指令及驗證相關功能 | 5d | 2005-10-21 A | 2005-10-27 A | 48 | 100% |  | 2005-03-14 | 2005-03-31 | 15d |  |  | start no earlier than 2005-03-14 |  |  |  |
| 50 | 1.3.7 | Nagra、Lab人員及開博 3方SAT驗證與報告 | 5d | 2005-10-28 A | 2005-11-03 A | 49 | 100% |  | 2005-03-23 | 2005-03-25 | 2.88d |  |  | finish no earlier than 2005-03-25 |  |  |  |
| 51 | 1.3.8 | 配合SMS與CA command gateway測試 | 4d | 2006-03-20 | 2006-03-23 | 25 |  |  | 2005-04-11 | 2005-04-15 | 4.88d | 7d | 0d | start no earlier than 2006-01-18 |  |  |  |
| 52 | 1.3.9 | 至Lab進行 3方整合測試(SMS、command gateway與CAS) | 2d | 2006-03-24 | 2006-03-27 | 51 |  |  | 2005-04-18 | 2005-04-22 | 4.88d | 7d | 0d | finish no earlier than 2005-04-22 |  |  |  |
| 53 | 1.3.10 | 測試報告書(EMC Lab人員與開博) | 1d | 2006-03-28 | 2006-03-28 | 52 |  |  | 2005-04-25 | 2005-04-27 | 2.88d | 13d |  | finish no earlier than 2005-04-27 |  |  |  |
| 54 | 1.4 | **SMS與客服網站(意藍)整合專案** | 300.75d | 2005-02-17 A | 2006-03-23 |  | 79% | 63.31d | 2005-02-17 | 2006-01-24 | 262d | 16.25d |  |  |  |  |  |
| 55 | 1.4.1 | 首次會議(開博提供功能清單及整合技術) | 0.88d | 2005-02-17 A | 2005-02-17 A |  | 100% |  | 2005-02-17 | 2005-02-17 | 0.88d |  |  | finish no earlier than 2005-02-17 |  |  |  |
| 56 | 1.4.2 | 意藍提供確認客服網站與SMS資料交換功能清單 | 0.88d | 2005-02-24 A | 2005-02-24 A | 55 | 100% |  | 2005-02-24 | 2005-02-24 | 0.88d |  |  | finish no earlier than 2005-02-24 |  |  |  |
| 57 | 1.4.3 | 4次例行會議(3/1起每週二規格參數會議) | 24.88d | 2005-03-01 A | 2005-03-29 A | 56 | 100% |  | 2005-03-01 | 2005-03-29 | 24.88d |  |  | finish no earlier than 2005-03-29 |  |  |  |
| 58 | 1.4.4 | 撰寫SMS web gateway功能程式 | 18d | 2005-12-22 A | 2006-01-13 A |  | 100% |  | 2005-03-14 | 2005-03-31 | 15d |  |  | start no earlier than 2005-03-14 |  |  |  |
| 59 | 1.4.5 | 增加二支查詢之API規格撰寫 | 12d | 2006-01-17 A | 2006-02-07 |  | 19% | 9.72d |  |  |  | 48d |  | start no earlier than 2006-01-04 |  |  |  |
| 60 | 1.4.6 | API程式撰寫 | 8d | 2006-03-06 | 2006-03-15 |  |  |  |  |  |  | 16.25d | 0d | start no earlier than 2006-03-06 |  |  |  |
| 61 | 1.4.7 | API測試 | 5d | 2006-03-16 | 2006-03-22 | 60 |  |  |  |  |  | 16.25d | 0d |  |  |  |  |

Notes:
- 37: EMC
- 41: 規格文件區:/ (PM Spec)_PPV_8.1_節目表管理_20050803_Liga.doc / /專案管理區/EMCPPV/參考資料區此檔案DEX Tags_20050512_Liga.xls
- 44: 15.1設定IPPV credit threshold(臨界點數) / 15.2Enable IPPV訂購權 / 15.3Disable IPPV訂購權 / 15.4重設IPPV訂購密碼 / 15.5下載或設定IPPV點數 / 15.6PPV節目表下載與資料同步 / 15.7As run log資料下載 / 15.8設定定期驗證子機(母子機配對) / 15.9臨時驗證子機 / 15.1取消母子機驗證(取消配對) / 15.11PPV節目授權 / 15.12PPV節目取消授權 / 15.13可彈性設定g/w專門處理PPV節目訂購與取消CA指令 / 15.14開機時設定STB回撥機制所需參數 / 15.15設定STB認證電話號碼 / 15.16設定STB回撥電話 / 15.17Enable STB 自動回撥 / 15.18Disable STB 自動回撥 / 15.19STB立即回撥 / 15.2"取得IPPV收視記錄, 並傳送至SMS" / 15.21"取得STB回撥記錄, 並傳送至SMS" / 15.22"取得STB未回撥記錄, 並傳送至SMS" / 15.23"取得認證電話號碼不一致STB記錄, 並傳送至SMS" / 15.24"取得STB狀態異常記錄, 並傳送至SMS" / 15.25"取得ICC記憶體已滿記錄, 並傳送至SMS" / 15.26"取得IPPV點數將盡記錄, 並傳送至SMS" / 15.27"取得IPPV special event記錄, 並傳送至SMS"
- 53: NICK
- 54: 次目錄下/專案管理區/EMCPPV/測試問題文件的WEB GATEWAY介接測試報告_20051125.zip
- 55: 12.1取得客戶基本資料 / 12.2取得客戶登入帳號資料(供Web認證) / 12.3取得SMS客戶認證資料(供Web認證) / 12.4取得客戶STB設備資料(包括型號、編號與位置…) / 12.5"取得客戶帳務資料(本期,歷史)" / 12.6取得客戶訂購付費頻道資料 / 12.7取得經營區資料 / 12.8取得客戶PPV訂購權/預付/後付等計費屬性資料 / 12.9取得PPV訂購明細資料 / 12.1取得PPV消費明細資料 / 12.11取得PPV預付點數餘額 / 12.12取得IPPV收視明細資料 / 12.13更新客戶基本資料 / 12.14更新客戶認證資料 / 12.15設定/清除親子密碼(CA指令) / 12.16IPPV點數訂購(認證、產生訂購資料、CA指令) / 12.17PPV預付點數訂購(認證、產生訂購資料) / 12.18設定/清除IPPV訂購密碼(CA指令) / 12.19線上請款所需收費資料之產生與入帳 / 12.2PPV節目訂購(認證、產生訂購資料、CA指令) / 12.21PPV節目取消訂購(認證、取消訂購資料、CA指令) / 共21個指令 2005/11/28 MODIFY / LIGA要再給我一份文件
- 56: 1.有線電視客戶身份SMS帳號密碼認證 / 2.數位電視頻道節目表資料(需可查出每一頻道每天即每小時撥映節目名稱) / 3.計次付費節目內容資料 / 4.客戶訂購計次付費節目明細查詢(ppv,ippv)[提供個人與管理端] / 5.客戶帳務資料查詢(日期區間內得歷次帳單及繳款記錄)(個人與管理端) / 6.客戶有線電視收視費轉帳作業(信用卡小額付款機制) / 7.計次付費預付金額轉帳作業(信用卡小額付款機制) / 8.客戶變更STB四碼數子Parental PIN Code / 9.客戶 iPPV訂購PIN Code / 10.計次付費節目訂購(需經過SMS訂購密碼認證,並包括CA系統訂購授權作業及處理結果) / 11.計次付費節目取消(需經過SMS訂購密碼認證,並包括CA系統訂購授權作業及處理結果) / 12.有線電視客戶基本資料查詢 / 13.有線客戶基本資料維護(少數基本資料欄位) / 14.客戶安裝STB設備資料查詢(已安裝STB型號,編號及位置)" / 15.欠費客戶名單查詢 / 16.經營區尋找 / 17. 客戶訂購數位頻道查詢 / 18.計次付費節目訂購 / 19.計次付費節目訂購取消 / 20.信用卡即時線上繳款 / 21.客戶變更STB parental PIN四碼數字 / 22.客戶變更STB iPPV訂購PIN四碼數字 / 23.線上預付金額下載至STB作業 / 24.客戶訂購計次付費節目明細表查詢 / 25.客戶安裝STB設備查詢 / 26.帳務及帳單查詢 / 27.有線電視客戶資料維護 / 28.計次付費節目表
- 59: ADD AT 2005/12/27
- 61: 22.客戶訂購數位頻道查詢 23.CMCP相關資訊查詢

| ID | WBS | Task | Duration | Start | Finish | Predecessors | Complete | Remaining | Baseline start | Baseline finish | Baseline duration | Total slack | Free slack | Constraint | Resources | Work | Actual work |
| --- | --- | --- | --- | --- | --- | --- | --- | --- | --- | --- | --- | --- | --- | --- | --- | --- | --- |
| 62 | 1.4.8 | **SMS web gateway與客服網站測試** | 256.75d | 2005-04-12 A | 2006-03-23 |  | 98% | 4.6d | 2005-04-12 | 2006-01-24 | 218d | 16.25d |  |  |  |  |  |
| 63 | 1.4.8.1 | 客服網站透過SMS web gateway查詢SMS相關資料 | 3.88d | 2005-04-12 A | 2005-04-15 A | 58 | 100% |  | 2005-04-12 | 2005-04-15 | 3.88d |  |  | finish no earlier than 2005-04-15 |  |  |  |
| 64 | 1.4.8.2 | 客服網站透過SMS web gateway對command gateway下達相關指令 | 30d | 2005-12-13 A | 2006-01-20 A |  | 100% |  | 2005-12-13 | 2005-12-30 | 14d |  |  | finish no earlier than 2006-01-18 |  |  |  |
| 65 | 1.4.8.3 | 客服網站透過SMS web gateway對線上付款交易下達相關指令 | 5d | 2006-01-18 A | 2006-01-24 A |  | 100% |  | 2006-01-18 | 2006-01-24 | 5d |  |  | start no earlier than 2006-01-18 |  |  |  |
| 66 | 1.4.8.4 | 提交測試報告書 | 3d | 2006-02-27 A | 2006-03-23 | 61 | 75% | 0.75d | 2005-04-15 | 2005-04-16 | 2d | 16.25d |  | finish no earlier than 2005-04-16 |  |  |  |
| 67 | 1.5 | **SMS與錄音系統整合專案** | 51d | 2005-09-16 A | 2005-11-25 A |  | 100% |  | 2005-02-17 | 2005-05-27 | 83d |  |  |  |  |  |  |
| 68 | 1.5.1 | 取得錄音功能技術文件 | 2d | 2005-09-16 A | 2005-09-19 A |  | 100% |  | 2005-02-17 | 2005-02-17 | 0.88d |  |  | start no earlier than 2005-09-16 |  |  |  |
| 69 | 1.5.2 | 討論API功能與參數 | 10d | 2005-09-20 A | 2005-10-01 A | 68 | 100% |  | 2005-03-14 | 2005-03-16 | 2d |  |  | start no earlier than 2005-03-14 |  |  |  |
| 70 | 1.5.3 | 與EMC確認整合功能 | 12d | 2005-10-03 A | 2005-10-19 A | 69 | 100% |  | 2005-03-16 | 2005-03-16 | 0.88d |  |  | finish no earlier than 2005-03-16 |  |  |  |
| 71 | 1.5.4 | 撰寫來電管理與錄音系統整合程式 | 10d | 2005-10-20 A | 2005-11-02 A | 70 | 100% |  | 2005-05-06 | 2005-05-18 | 10d |  |  | start no earlier than 2005-05-06 |  |  |  |
| 72 | 1.5.5 | SMS與錄音系統介接測試 | 15d | 2005-11-03 A | 2005-11-23 A | 71 | 100% |  | 2005-05-18 | 2005-05-25 | 6d |  |  | start no earlier than 2005-05-18 |  |  |  |
| 73 | 1.5.6 | 提交測試報告書 | 2d | 2005-11-24 A | 2005-11-25 A | 72 | 100% |  | 2005-05-25 | 2005-05-27 | 2d |  |  | finish no earlier than 2005-05-26 |  |  |  |
| 74 | 1.6 | **SMS與線上請款專案** | 226d | 2005-05-16 A | 2006-03-21 |  | 87% | 30.47d | 2005-05-16 | 2006-02-09 | 197d | 18d |  |  |  |  |  |
| 75 | 1.6.1 | 取得線上請款文件 | 1d | 2005-05-16 A | 2005-05-16 A |  | 100% |  | 2005-05-16 | 2005-05-16 | 1d |  |  | start no earlier than 2005-05-16 |  |  |  |
| 76 | 1.6.2 | 撰寫SMS線上請款元件 | 30d | 2005-05-17 A | 2005-06-20 A | 75 | 100% |  | 2005-05-17 | 2005-06-20 | 30d |  |  |  |  |  |  |
| 77 | 1.6.3 | 測試SMS線上請款元件與Payment gateway公司進行驗證 | 11d | 2005-09-23 A | 2005-10-06 A | 76FS+70d | 100% |  | 2005-09-23 | 2005-10-06 | 10d |  |  |  |  |  |  |
| 78 | 1.6.4 | 封裝線上請款元件於帳款付費單元 | 35d | 2005-12-19 A | 2006-02-08 A | 77FS+50d | 100% |  | 2005-12-19 | 2006-01-18 | 24d |  |  |  |  |  |  |
| 79 | 1.6.5 | SMS與線上請款機制介接測試 | 5d | 2006-03-06 | 2006-03-10 | 78 |  |  | 2006-01-19 | 2006-01-25 | 5d | 15d | 0d | start no earlier than 2006-03-06 |  |  |  |
| 80 | 1.6.6 | 提交測試報告書 | 7d | 2006-03-13 | 2006-03-21 | 79 |  |  | 2006-01-26 | 2006-02-09 | 7d | 18d |  | start no earlier than 2005-05-16 |  |  |  |
| 81 | 1.7 | **測試小組PPV及USER行前測試** | 77d | 2005-12-15 A | 2006-04-05 |  | 67% | 25.38d | 2005-05-18 | 2006-03-01 | 209d | 7d |  |  | Jacy; Debby; Karen; Liga; Penny | 2952h | 1942.99h |
| 82 | 1.7.1 | **主體測試(Phase 1 & 2)** | 77d | 2005-12-15 A | 2006-04-05 |  | 78% | 17.22d | 2005-12-15 | 2006-01-27 | 33d | 7d |  |  |  |  |  |
| 83 | 1.7.1.1 | Phase 1 & 2依據需求分析制定測試項目 | 25d | 2005-12-15 A | 2006-01-17 A |  | 100% |  | 2005-12-15 | 2006-01-17 | 25d |  |  | start no earlier than 2005-12-15 |  |  |  |
| 84 | 1.7.1.2 | 單元測試 | 25d | 2005-12-15 A | 2006-01-17 A |  | 100% |  | 2005-12-15 | 2006-01-17 | 25d |  |  | start no earlier than 2005-12-15 |  |  |  |
| 85 | 1.7.1.3 | SMS整合測試 | 12d | 2006-03-13 | 2006-03-28 | 84 |  |  | 2006-01-18 | 2006-01-27 | 8d | 13d |  | start no earlier than 2006-03-13 |  |  |  |
| 86 | 1.7.1.4 | SMS與Command gateway測試 | 7d | 2006-01-23 A | 2006-03-29 | 52 | 75% | 1.75d | 2005-12-31 | 2006-01-05 | 5d | 7d | 0d | start no earlier than 2005-12-14 |  |  |  |
| 87 | 1.7.1.5 | SMS與客服網站測試 | 5d | 2006-03-27 A | 2006-04-03 | 86FS+2d | 75% | 1.25d | 2006-01-06 | 2006-01-11 | 4d | 7d | 0d | finish no earlier than 2005-04-15 |  |  |  |
| 88 | 1.7.1.6 | UAT測試報告 | 2d | 2006-04-04 | 2006-04-05 | 87 |  |  | 2006-01-12 | 2006-01-13 | 2d | 7d |  |  |  |  |  |

Notes:
- 69: 10.1 可將來電記錄與錄檔做連結 / 10.2 CSR可決定是否啟動或關閉錄音 / 10.3 可點選來電記錄來聽對應錄音 / 10.4 可跨SO查詢客服中心來電記錄，聽取對應錄音
- 76: 11.1 線上請授權 / 11.2 線上取消授權 / 11.3 批次請款 / 11.4 批次/單筆取消請款

| ID | WBS | Task | Duration | Start | Finish | Predecessors | Baseline start | Baseline finish | Baseline duration | Total slack | Free slack | Constraint | Resources | Work |
| --- | --- | --- | --- | --- | --- | --- | --- | --- | --- | --- | --- | --- | --- | --- |
| 89 | 1.7.2 | **線上請款測試** | 36d | 2006-01-25 | 2006-03-21 |  | 2005-05-18 | 2006-03-01 | 209d | 18d |  |  |  |  |
| 90 | 1.7.2.1 | SMS與客服網站之線上請款測試 | 5d | 2006-01-25 | 2006-02-06 | 65 | 2006-01-25 | 2006-02-06 | 5d | 49d |  | start no earlier than 2005-04-14 |  |  |
| 91 | 1.7.2.2 | 制定SMS與線上請款測試項目並進行測試 | 5d | 2006-03-13 | 2006-03-17 | 79 | 2006-02-07 | 2006-02-20 | 10d | 15d | 0d | finish no earlier than 2005-05-20 |  |  |
| 92 | 1.7.2.3 | UAT測試報告 | 2d | 2006-03-20 | 2006-03-21 | 91 | 2006-02-21 | 2006-03-01 | 7d | 15d | 0d | finish no earlier than 2005-06-02 |  |  |
| 93 | 1.8 | 驗收行前成品流程展示 | 1d | 2006-03-14 | 2006-03-14 |  |  |  |  | 23d |  | start no earlier than 2006-03-14 |  |  |
| 94 | 1.9 | **教育訓練** | 19d | 2006-03-13 | 2006-04-06 |  | 2006-03-02 | 2006-03-22 | 15d | 0d |  |  | CableSoft | 152h |
| 95 | 1.9.1 | 制作教育訓練教材(含各種情境模擬,影音檔製作) | 10d | 2006-03-13 | 2006-03-24 |  | 2006-03-02 | 2006-03-17 | 12d | 15d |  | start no earlier than 2006-03-13 |  |  |
| 96 | 1.9.2 | 使用手冊(製作) | 12d | 2006-03-13 | 2006-03-28 |  | 2006-03-02 | 2006-03-20 | 13d | 0d |  | finish no earlier than 2006-03-28 |  |  |
| 97 | 1.9.3 | 使用手冊及影音檔提供 | 2d | 2006-03-29 | 2006-03-30 | 96 | 2006-03-21 | 2006-03-22 | 2d | 0d |  | start no earlier than 2006-03-13 |  |  |
| 98 | 1.9.4 | 總公司 PPV/IPPV營管與訓練環境設定 | 1d | 2006-03-22 | 2006-03-22 | 92 | 2006-03-02 | 2006-03-06 | 3d | 15d | 0d | finish no earlier than 2005-04-04 |  |  |
| 99 | 1.9.5 | 各種情境演練測試及各家影音檔行前自習 | 5d | 2006-03-31 | 2006-04-06 | 97 | 2006-03-07 | 2006-03-20 | 10d | 0d |  | finish no earlier than 2005-05-04 |  |  |
| 100 | 1.10 | **上線輔導** | 17d | 2006-03-23 | 2006-04-14 |  | 2006-03-21 | 2006-03-31 | 9d | 0d |  |  |  |  |
| 101 | 1.10.1 | PM至輔導SO PPV/IPPV環境設定 | 2d | 2006-03-23 | 2006-03-24 | 98 | 2006-03-21 | 2006-03-22 | 2d | 15d |  | finish no earlier than 2005-05-03 |  |  |
| 102 | 1.10.2 | PM至各SO上線更新程式及輔導 | 3d | 2006-04-07 | 2006-04-11 | 99 | 2006-03-23 | 2006-03-27 | 3d | 3d |  | start no earlier than 2005-05-09 |  |  |
| 103 | 1.10.3 | PPV專案主體安裝單簽回 | 3d | 2006-04-07 | 2006-04-11 | 99 | 2006-03-28 | 2006-03-28 | 1d | 0d |  | finish no earlier than 2005-05-13 |  |  |
| 104 | 1.10.4 | 進行驗收作業及簽署報告書 | 3d | 2006-04-12 | 2006-04-14 | 103 | 2006-03-29 | 2006-03-31 | 3d | 0d |  | finish no earlier than 2005-05-30 |  |  |
| 105 | 1.11 | **SMS Phase 3(IPPV有回傳制)(目前未估時間)** | 1d | 2005-12-14 | 2005-12-14 |  | 2005-12-14 | 2005-12-14 | 1d | 84d |  |  |  | 8h |
| 106 | 1.11.1 | IPPV核心模組 | 1d | 2005-12-14 | 2005-12-14 |  | 2005-12-14 | 2005-12-14 | 1d | 84d |  | start no earlier than 2005-12-14 |  |  |
| 107 | 1.11.2 | 帳務管理 | 1d | 2005-12-14 | 2005-12-14 |  | 2005-12-14 | 2005-12-14 | 1d | 84d |  | start no earlier than 2005-12-14 |  |  |
| 108 | 1.11.3 | 報表管理 | 1d | 2005-12-14 | 2005-12-14 |  | 2005-12-14 | 2005-12-14 | 1d | 84d |  | start no earlier than 2005-12-14 |  |  |
| 109 | 1.11.4 | 整合測試 | 1d | 2005-12-14 | 2005-12-14 |  | 2005-12-14 | 2005-12-14 | 1d | 84d |  | start no earlier than 2005-12-14 | RD/PM | 8h |
| 110 | 1.12 | **程式測試** | 9d | 2005-02-14 | 2005-02-23 |  |  |  |  | 311d |  |  |  |  |
| 111 | 1.12.1 | SMS與IPPV有回傳測試(時程未詳定) | 9d | 2005-02-14 | 2005-02-23 |  | 2005-05-18 | 2005-05-27 | 9d | 311d |  |  |  |  |

Notes:
- 93: RFP流程TRY RUN SHOW / 1.IPPV點數訂購流程 / 2.PPV預付制點數訂購流程 / 3.PPV節目訂購流程 / 4.PPV節目取消訂購流程 / 5.PPV後付制結算流程(待討論)/ 6.PPV預付制結算流程 / 7.PPV節目表管理流程
- 105: 1.此部份需討論,設備回傳功能是否具備
- 106: 3.3 IPPV屬性設定--有回傳機制(CSR功能，針對特定客戶或盒子) / 3.4 IPPV屬性顯示--有回傳機制 / 3.5 IPPV批次作業
- 107: 7.1 IPPV點數結清作業--有回傳機制 / 7.2 IPPV點數移轉作業--有回傳機制 / 7.12 IPPV節目收視對帳單列印
- 108: 9.2 IPPV報表--有回傳機制 / IPPV收視記錄表 / STB回撥記錄統計表 / STB未回撥統計表 / 認證電話號碼不一致客戶設備統計表 / ICC記憶體已滿一覽表 / IPPV點數將盡一覽表(可含點數一覽表) / IPPV點數結清統計表��/ IPPV點數移轉統計表/ 9.4 PPV節目收視熱門排行表(含IPPV)
