# TBC Cardless專案-20120329

Schedule from MS Project, 2012-03-13 to 2012-07-10.
My Company

## Calendars

- 標準: Mon-Fri 08:00-12:00, 13:00-17:00; Sat-Sun off.

## Schedule

| ID | WBS | Task | Type | Duration | Start | Finish | Predecessors | Total slack | Free slack | Constraint |
| --- | --- | --- | --- | --- | --- | --- | --- | --- | --- | --- |
| 1 | 1 | **Cardless專案** |  | 86d | 2012-03-13 | 2012-07-10 |  | 0d |  |  |
| 2 | 1.1 | **文件分析** |  | 86d | 2012-03-13 | 2012-07-10 |  | 0d |  |  |
| 3 | 1.1.1 | 取得Cardless技術文件 | milestone | 1d | 2012-03-13 | 2012-03-13 |  | 66d | 2d | start no earlier than 2012-03-13 |
| 4 | 1.1.2 | 技術文件導讀 |  | 1d | 2012-03-16 | 2012-03-16 | 3 | 44d |  | start no earlier than 2012-03-16 |
| 5 | 1.1.3 | 需求功能導讀 |  | 1d | 2012-03-16 | 2012-03-16 | 3 | 44d |  | start no earlier than 2012-03-16 |
| 6 | 1.1.4 | **Gateway CMD Study** |  | 24d | 2012-04-03 | 2012-05-04 |  | 0d |  |  |
| 7 | 1.1.4.1 | Nagra g/w開發導讀 |  | 5d | 2012-04-03 | 2012-04-09 |  | 48d |  | start no earlier than 2012-04-03 |
| 8 | 1.1.4.2 | CMD 126 Assign Virtual UD to NUID |  | 0.5d | 2012-05-02 | 2012-05-02 | 7 | 0d |  | start no earlier than 2012-05-02 |
| 9 | 1.1.4.3 | CMD 1003 |  | 0.5d | 2012-05-02 | 2012-05-02 | 8 | 0d |  | start no earlier than 2012-03-21 |
| 10 | 1.1.4.4 | CMD 904 Cancel list of products |  | 1d | 2012-05-03 | 2012-05-03 | 9 | 0d |  | start no earlier than 2012-03-21 |
| 11 | 1.1.4.5 | CMD 905 Add enhanced list of products |  | 1d | 2012-05-04 | 2012-05-04 | 10 | 0d |  | start no earlier than 2012-03-21 |
| 12 | 1.1.5 | **營運流程分析** |  | 7d | 2012-03-21 | 2012-03-29 |  | 48.5d |  |  |
| 13 | 1.1.5.1 | 需求開發功能撰寫 |  | 3d | 2012-03-21 | 2012-03-23 | 5 | 59d |  | start no earlier than 2012-03-21 |
| 14 | 1.1.5.2 | 需求規格確認 |  | 1d | 2012-03-29 | 2012-03-29 |  | 54d |  |  |
| 15 | 1.1.6 | **撰寫SAT測試情境** |  | 13d | 2012-04-10 | 2012-04-26 |  | 53d |  |  |
| 16 | 1.1.6.1 | NagraVision Gateway新增功能測試情境 |  | 3d | 2012-04-10 | 2012-04-12 | 14 | 40d | 0d | start no earlier than 2012-04-10 |
| 17 | 1.1.6.2 | 撰寫營運系統新增功能測試情境 |  | 5d | 2012-04-13 | 2012-04-19 | 16 | 40d |  |  |
| 18 | 1.1.6.3 | 確認Nagra g/w與營運功能SAT文件項目 |  | 1d | 2012-04-26 | 2012-04-26 | 17 | 34d |  | start no earlier than 2012-04-26 |
| 19 | 1.1.7 | **NagraVision Gateway開發** |  | 28d | 2012-05-07 | 2012-06-13 |  | 0d |  |  |
| 20 | 1.1.7.1 | CMD 126 Assign Virtual UD to NUID |  | 3d | 2012-05-07 | 2012-05-09 | 11 | 0d |  | start no earlier than 2012-04-10 |
| 21 | 1.1.7.2 | CMD 1003 |  | 5d | 2012-05-10 | 2012-05-16 | 20 | 0d |  | start no earlier than 2012-04-10 |
| 22 | 1.1.7.3 | CMD 904 Cancel list of products |  | 3d | 2012-05-17 | 2012-05-21 | 21 | 0d |  |  |
| 23 | 1.1.7.4 | CMD 905 Add enhanced list of products |  | 8d | 2012-05-22 | 2012-05-31 | 22 | 0d |  |  |
| 24 | 1.1.7.5 | **Lab測試** |  | 9d | 2012-06-01 | 2012-06-13 |  | 0d |  |  |
| 25 | 1.1.7.5.1 | Gateway新增API測試與數據搜集 |  | 2d | 2012-06-01 | 2012-06-04 | 23 | 0d |  |  |
| 26 | 1.1.7.5.2 | 功能調整 |  | 5d | 2012-06-05 | 2012-06-11 | 25 | 0d |  |  |
| 27 | 1.1.7.5.3 | 壓力測試 |  | 2d | 2012-06-12 | 2012-06-13 | 26 | 0d |  |  |

| ID | WBS | Task | Duration | Start | Finish | Predecessors | Total slack | Free slack | Constraint |
| --- | --- | --- | --- | --- | --- | --- | --- | --- | --- |
| 28 | 1.1.8 | **營運功能開發** | 30d | 2012-05-08 | 2012-06-18 |  | 15.5d |  |  |
| 29 | 1.1.8.1 | 參數與代碼調整 | 1.5d | 2012-05-08 | 2012-05-09 | 14 | 15.5d | 0.5d | start no earlier than 2012-05-08 |
| 30 | 1.1.8.2 | 入庫作業 | 5d | 2012-05-10 | 2012-05-16 | 29 | 3d | 0d | start no earlier than 2012-05-10 |
| 31 | 1.1.8.3 | 出庫作業 | 3d | 2012-05-17 | 2012-05-21 | 30 | 3d | 0d |  |
| 32 | 1.1.8.4 | 燒機作業功能調整 | 2d | 2012-05-22 | 2012-05-23 | 31 | 3d | 0d |  |
| 33 | 1.1.8.5 | 工單套印調整 | 1d | 2012-05-22 | 2012-05-22 |  | 19d |  | start no earlier than 2012-05-22 |
| 34 | 1.1.8.6 | 整批軟卡(vUA)更換作業 | 8d | 2012-05-24 | 2012-06-04 | 32 | 3d | 0d |  |
| 35 | 1.1.8.7 | 開發功能內部測試(含功能微調) | 10d | 2012-06-05 | 2012-06-18 | 34 | 3d | 0d |  |
| 36 | 1.1.9 | **教育訓練與文件製作** | 7d | 2012-06-05 | 2012-06-13 |  | 19d |  |  |
| 37 | 1.1.9.1 | Nagra g/w補增 | 2d | 2012-06-12 | 2012-06-13 | 26 | 19d |  |  |
| 38 | 1.1.9.2 | 營運功能教材製作 | 5d | 2012-06-05 | 2012-06-11 | 34 | 21d |  |  |
| 39 | 1.1.10 | **SAT測試** | 11d | 2012-06-14 | 2012-06-28 |  | 0d |  |  |
| 40 | 1.1.10.1 | 測試環境設定與調整 | 1d | 2012-06-19 | 2012-06-19 | 35 | 6d |  |  |
| 41 | 1.1.10.2 | 開博與NagraVision技術人員整合驗證 | 3d | 2012-06-14 | 2012-06-18 | 27 | 0d |  |  |
| 42 | 1.1.10.3 | 開博營運功能與Nagra g/w整合驗證 | 5d | 2012-06-19 | 2012-06-25 | 41 | 0d |  |  |
| 43 | 1.1.10.4 | 開博對TBC進行SAT | 3d | 2012-06-26 | 2012-06-28 | 42 | 0d |  |  |
| 44 | 1.1.11 | **上線作業** | 8d | 2012-06-29 | 2012-07-10 |  | 0d |  |  |
| 45 | 1.1.11.1 | 開發功能說明會 | 1d | 2012-06-29 | 2012-06-29 | 43 | 0d |  |  |
| 46 | 1.1.11.2 | 開發功能教育訓練 | 2d | 2012-07-02 | 2012-07-03 | 45 | 0d |  |  |
| 47 | 1.1.11.3 | NagraVision Gateway更新 | 1d | 2012-07-04 | 2012-07-04 | 46 | 4d |  |  |
| 48 | 1.1.11.4 | 營運功能系統更新 | 1d | 2012-07-04 | 2012-07-04 | 46 | 4d |  |  |
| 49 | 1.1.11.5 | 上線輔導 | 5d | 2012-07-04 | 2012-07-10 | 46 | 0d |  |  |
